# VStar Phase I

Schedule from GanttProject, 2009-05-08 to 2010-01-04.
AAVSO
VStar Phase I tasks and progress.

## Calendars

- Project calendar: Mon-Fri working; Sat-Sun off.

## Schedule

| ID | WBS | Task | Type | Duration | Start | Finish | Predecessors | Complete |
| --- | --- | --- | --- | --- | --- | --- | --- | --- |
| 1 | 1 | Draft Spec Received | milestone | 0d | 2009-05-08 | 2009-05-08 |  |  |
| 2 | 2 | Spec clarification & Requirements Analysis |  | 14d | 2009-05-11 | 2009-05-28 | 1 | 100% |
| 3 | 3 | **Code and Unit Test** |  | 156d | 2009-06-01 | 2010-01-04 | 2 | 93% |
| 4 | 3.1 | Text input validation framework |  | 12d | 2009-06-01 | 2009-06-16 |  | 100% |
| 5 | 3.2 | Model-observer framework, initial GUI |  | 14d | 2009-06-01 | 2009-06-18 |  | 100% |
| 6 | 3.3 | GUI mockups and incorporation of feedback |  | 16d | 2009-06-19 | 2009-07-10 |  | 100% |
| 7 | 3.4 | Simple format input and observation reader framework |  | 23d | 2009-06-11 | 2009-07-13 |  | 100% |
| 8 | 3.5 | AAVSO Download format input |  | 2d | 2009-07-10 | 2009-07-13 |  | 100% |
| 9 | 3.6 | Raw data plot and table |  | 7d | 2009-06-15 | 2009-06-23 |  | 100% |
| 10 | 3.7 | Raw data means plot and table |  | 5d | 2009-07-20 | 2009-07-24 |  | 75% |
| 11 | 3.8 | Phase plot and table |  | 46d | 2009-10-27 | 2009-12-29 |  | 100% |
| 12 | 3.9 | Phase plot and table (means) |  | 53d | 2009-10-22 | 2010-01-04 |  | 100% |
| 13 | 3.10 | Saving plots & tables |  | 7d | 2009-07-13 | 2009-07-21 |  | 50% |
| 14 | 3.11 | Printing plots & tables |  | 7d | 2009-07-13 | 2009-07-21 |  | 100% |
| 15 | 3.12 | **AAVSO Database input** |  | 101d | 2009-06-26 | 2009-11-13 |  | 90% |
| 16 | 3.12.1 | SQL: view experiments, obs query tweaking |  | 8d | 2009-06-26 | 2009-07-07 |  | 100% |
| 17 | 3.12.2 | AID observation reader |  | 6d | 2009-07-23 | 2009-07-30 |  | 100% |
| 18 | 3.12.3 | 10 Stars Selection |  | 1d | 2009-07-31 | 2009-07-31 |  | 100% |
| 19 | 3.12.4 | Arbitrary star selection |  | 25d | 2009-09-21 | 2009-10-23 |  | 100% |
| 20 | 3.12.5 | Obscode lookup via CitizenSky login |  | 1d | 2009-11-10 | 2009-11-10 |  |  |
| 21 | 3.12.6 | Time panning (when database is source) |  | 3d | 2009-11-11 | 2009-11-13 |  |  |
| 22 | 3.13 | Single observation details by clicking point on plot |  | 11d | 2009-08-10 | 2009-08-24 |  | 100% |
| 23 | 3.14 | Marking observation as discrepant (plot & table) |  | 1d | 2009-11-09 | 2009-11-09 |  | 10% |
| 24 | 3.15 | Visually joining observer data (from selected ob or login) |  | 2d | 2009-11-13 | 2009-11-16 |  |  |
| 25 | 3.16 | Zooming (more control than default chart zoom) |  | 6d | 2009-11-17 | 2009-11-24 |  |  |
| 26 | 3.17 | Category (band, fainter-than) colors (default, chooser) |  | 37d | 2009-09-23 | 2009-11-12 |  | 100% |
| 27 | 3.18 | Preferences (e.g. window size & position, band colors) |  | 5d | 2009-11-18 | 2009-11-24 |  |  |
| 28 | 3.19 | Web Start (JNLP) |  | 92d | 2009-07-30 | 2009-12-04 |  | 100% |

| ID | WBS | Task | Type | Duration | Start | Finish | Complete |
| --- | --- | --- | --- | --- | --- | --- | --- |
| 29 | 4 | **Documentation** |  | 6d | 2009-07-24 | 2009-07-31 | 5% |
| 30 | 4.1 | HTML for Help menu item |  | 6d | 2009-07-24 | 2009-07-31 | 5% |
| 31 | 5 | **Testing** |  | 33d | 2009-06-23 | 2009-08-06 | 8% |
| 32 | 5.1 | System Testing |  | 33d | 2009-06-23 | 2009-08-06 | 10% |
| 33 | 5.2 | Acceptance Testing |  | 3d | 2009-08-04 | 2009-08-06 |  |
| 34 | 6 | CitizenSky Workshop 1 | milestone | 0d | 2009-08-04 | 2009-08-04 |  |
